# wbs_parece_que_deu_erradov2

How a schedule from MS Project changed from version to version. A marks actual dates.

## Version 1 (saved 2019-05-27)

Note of the change: Subindo dados sobre o administrativo

| ID | WBS | Task | Duration | Start | Finish | Predecessors | Complete | Total float |
| --- | --- | --- | --- | --- | --- | --- | --- | --- |
| 1 | 1 | **Projeto Mob'Share** | 36.25d | 2019-02-15 A | 2019-05-01 |  | 76% | 0d |
| 2 | 1.1 | **Planejamento** | 9.75d | 2019-02-15 A | 2019-03-07 |  | 95% | 22.5d |
| 3 | 1.1.1 | **Entendimento do Projeto** | 0.5d | 2019-02-15 A | 2019-02-16 A |  | 100% |  |
| 4 | 1.1.1.1 | **Reuniões** | 0.5d | 2019-02-15 A | 2019-02-16 A |  | 100% |  |
| 5 |  | Reunião - sobre o básico do projeto | 2h | 2019-02-15 A | 2019-02-15 A |  | 100% |  |
| 6 |  | Reunião - Divisão das partes | 2h | 2019-02-15 A | 2019-02-16 A | 5 | 100% |  |
| 7 | 1.1.2 | **Levantamento de Requisitos** | 4.25d | 2019-02-16 A | 2019-02-24 A | 3 | 100% |  |
| 8 | 1.1.2.1 | **Elaboração das perguntas** | 1d | 2019-02-16 A | 2019-02-18 A |  | 100% |  |
| 9 |  | Web | 6h | 2019-02-16 A | 2019-02-17 A |  | 100% |  |
| 10 |  | Mobile | 2h | 2019-02-17 A | 2019-02-18 A | 9 | 100% |  |
| 11 |  | Desktop | 2h | 2019-02-17 A | 2019-02-18 A | 9 | 100% |  |
| 12 | 1.1.2.2 | **Cliente - Reunião** | 0.88d | 2019-02-18 A | 2019-02-20 A | 8 | 100% |  |
| 13 |  | Reunião WEB | 2h | 2019-02-18 A | 2019-02-18 A |  | 100% |  |
| 14 |  | Reunião WEB - 2 | 1h | 2019-02-18 A | 2019-02-19 A | 13 | 100% |  |
| 15 |  | Reunião Desktop | 2h | 2019-02-19 A | 2019-02-19 A | 14 | 100% |  |
| 16 |  | Reunião Mobile | 2h | 2019-02-19 A | 2019-02-20 A | 15 | 100% |  |
| 17 | 1.1.2.3 | **Documentação das Reuniões** | 2.38d | 2019-02-20 A | 2019-02-24 A | 12 | 100% |  |
| 18 | 1.1.2.3.1 | **Web** | 1d | 2019-02-20 A | 2019-02-22 A | 13, 14 | 100% |  |
| 19 |  | RF | 4h | 2019-02-20 A | 2019-02-21 A |  | 100% |  |
| 20 |  | RNF | 4h | 2019-02-21 A | 2019-02-22 A | 19 | 100% |  |
| 21 | 1.1.2.3.2 | **Mobile** | 0.25d | 2019-02-22 A | 2019-02-22 A | 18, 16 | 100% |  |
| 22 |  | RF | 2h | 2019-02-22 A | 2019-02-22 A |  | 100% |  |
| 23 | 1.1.2.3.3 | **Desktop** | 0.25d | 2019-02-22 A | 2019-02-22 A | 18, 15 | 100% |  |
| 24 |  | RF | 2h | 2019-02-22 A | 2019-02-22 A |  | 100% |  |
| 25 |  | ATAs | 9h | 2019-02-22 A | 2019-02-24 A | 18, 21, 23 | 100% |  |
| 26 | 1.1.3 | **Documentação do projeto** | 5d | 2019-02-24 A | 2019-03-07 | 7 | 87% | 22.5d |
| 27 |  | WBS | 17h | 2019-02-24 A | 2019-03-01 A |  | 100% |  |
| 28 |  | Cronograma | 1h | 2019-03-01 A | 2019-03-01 A | 27 | 100% |  |
| 29 |  | Aceite do Cliente | 2h | 2019-03-01 A | 2019-03-02 A | 28 | 100% |  |
| 30 |  | Escopo do Projeto | 1d | 2019-03-02 A | 2019-03-04 A | 29 | 100% |  |
| 31 |  | Escopo do Produto | 1d | 2019-03-04 A | 2019-03-06 A | 30 | 100% |  |
| 32 |  | Dicionário de Dados | 4h | 2019-03-06 A | 2019-03-07 A | 31 | 100% |  |
| 33 | 1.1.3.7 | **Manual do Usuário** | 4.12d | 2019-02-24 A | 2019-03-05 |  | 75% | 23.38d |
| 34 |  | Manual Web | 21h | 2019-02-24 A | 2019-03-02 |  | 75% | 1.03d |
| 35 |  | Manual do Mobile | 11h | 2019-03-02 A | 2019-03-05 | 34 | 75% | 23.5d |
| 36 |  | Manual do Desktop | 12h | 2019-03-02 A | 2019-03-05 | 34 | 75% | 23.38d |
| 37 | 1.1.4 | **Wireframes** | 3.75d | 2019-02-24 A | 2019-03-04 A | 7 | 100% |  |
| 38 | 1.1.4.1 | **Web** | 3.5d | 2019-02-24 A | 2019-03-04 A |  | 100% |  |
| 39 | 1.1.4.1.1 | **Site** | 1.38d | 2019-02-24 A | 2019-02-28 A |  | 100% |  |
| 40 |  | Paginas | 11h | 2019-02-24 A | 2019-02-28 A |  | 100% |  |
| 41 | 1.1.4.1.2 | **Painel do usuário** | 2.12d | 2019-02-28 A | 2019-03-04 A | 39 | 100% |  |
| 42 |  | Edição de perfil do usuário | 3h | 2019-02-28 A | 2019-02-28 A |  | 100% |  |
| 43 |  | Gerenciamento de veículo | 3h | 2019-02-28 A | 2019-03-01 A | 42 | 100% |  |
| 44 |  | Gerenciamento de anúncios | 4h | 2019-03-01 A | 2019-03-02 A | 43 | 100% |  |
| 45 |  | Gerenciamento de locações - Meus veículos | 3h | 2019-03-02 A | 2019-03-03 A | 43, 44 | 100% |  |
| 46 |  | Minhas Corridas | 3h | 2019-03-03 A | 2019-03-03 A | 45 | 100% |  |
| 47 |  | Conversas | 1h | 2019-03-03 A | 2019-03-04 A | 46 | 100% |  |
| 48 | 1.1.4.1.3 | **CMS** | 1.12d | 2019-02-28 A | 2019-03-02 A | 39 | 100% |  |
| 49 |  | Home | 3h | 2019-02-28 A | 2019-02-28 A |  | 100% |  |
| 50 |  | Gerenciamento de Paginas | 3h | 2019-02-28 A | 2019-03-01 A | 49 | 100% |  |
| 51 |  | Gerenciamento de usuários | 2h | 2019-02-28 A | 2019-03-01 A | 49 | 100% |  |
| 52 |  | Gerenciamento de Veículos | 2h | 2019-03-01 A | 2019-03-01 A | 49, 51 | 100% |  |
| 53 |  | Gerenciamento de anúncios | 2h | 2019-03-01 A | 2019-03-02 A | 49, 52 | 100% |  |
| 54 |  | Gerenciamento de anúncios de venda | 2h | 2019-03-01 A | 2019-03-02 A | 49, 52 | 100% |  |
| 55 |  | Gerenciamento de Clientes | 2h | 2019-03-01 A | 2019-03-01 A | 49, 51 | 100% |  |
| 56 |  | Gerenciamento de Fale Conosco | 2h | 2019-03-01 A | 2019-03-01 A | 49, 51 | 100% |  |
| 57 |  | Página de E-mails | 1h | 2019-03-01 A | 2019-03-02 A | 49, 56, 51 | 100% |  |
| 58 |  | Desktop | 10h | 2019-02-24 A | 2019-02-27 A |  | 100% |  |
| 59 |  | Mobile | 10h | 2019-03-02 A | 2019-03-04 A | 48 | 100% |  |
| 60 | 1.1.5 | **Embasamento teórico** | 4d | 2019-02-16 A | 2019-02-24 A | 3 | 100% |  |
| 61 |  | Embasamento Banco de Dados | 1d | 2019-02-16 A | 2019-02-18 A |  | 100% |  |
| 62 |  | Embasamento Web | 1d | 2019-02-18 A | 2019-02-20 A | 61 | 100% |  |
| 63 |  | Embasamento Desktop | 1d | 2019-02-20 A | 2019-02-22 A | 62 | 100% |  |
| 64 |  | Embasamento Mobile | 1d | 2019-02-22 A | 2019-02-24 A | 63 | 100% |  |
| 65 | 1.1.6 | **UML** | 2d | 2019-02-24 A | 2019-03-01 A | 7 | 100% |  |
| 66 |  | Diagrama de caso de uso | 1d | 2019-02-24 A | 2019-02-27 A |  | 100% |  |
| 67 |  | Diagrama de classes | 1d | 2019-02-27 A | 2019-03-01 A | 66 | 100% |  |
| 68 | 1.2 | **Desenvolvimento** | 27.5d | 2019-02-24 A | 2019-04-23 | 3, 7 | 73% | 0d |
| 69 | 1.2.1 | **Banco de Dados** | 4.12d | 2019-02-24 A | 2019-03-05 A | 3, 7 | 100% |  |
| 70 |  | Modelo Conceitual | 12h | 2019-02-24 A | 2019-02-28 A |  | 100% |  |

| ID | WBS | Task | Duration | Start | Finish | Predecessors | Complete | Total float |
| --- | --- | --- | --- | --- | --- | --- | --- | --- |
| 71 |  | Modelo Lógico | 16h | 2019-02-28 A | 2019-03-04 A | 70 | 100% |  |
| 72 |  | Modelo Físico | 1h | 2019-03-04 A | 2019-03-04 A | 71 | 100% |  |
| 73 |  | Dicionário de Dados | 4h | 2019-03-04 A | 2019-03-05 A | 72 | 100% |  |
| 74 | 1.2.2 | **Web** | 23.38d | 2019-03-05 A | 2019-04-23 | 69 | 83% | 0d |
| 75 | 1.2.2.1 | **Site** | 23.38d | 2019-03-05 A | 2019-04-23 |  | 70% | 0d |
| 76 | 1.2.2.1.1 | **Paginas** | 10.25d | 2019-03-05 A | 2019-03-27 A |  | 100% |  |
| 77 |  | Pagina home | 10h | 2019-03-05 A | 2019-03-08 A |  | 100% |  |
| 78 |  | Fale conosco | 2h | 2019-03-08 A | 2019-03-09 A | 77 | 100% |  |
| 79 |  | Pagina seja um parceiro | 10h | 2019-03-09 A | 2019-03-11 A | 78 | 100% |  |
| 80 |  | Pagina sobre a empresa | 1d | 2019-03-11 A | 2019-03-13 A | 79 | 100% |  |
| 81 |  | Pagina termos de uso | 1d | 2019-03-13 A | 2019-03-15 A | 80 | 100% |  |
| 82 |  | Pagina melhores avaliações | 7h | 2019-03-15 A | 2019-03-17 A | 81 | 100% |  |
| 83 |  | Pagina principais Anúncios | 6h | 2019-03-17 A | 2019-03-18 A | 82 | 100% |  |
| 84 |  | Pagina tabela de Preços | 6h | 2019-03-18 A | 2019-03-20 A | 83 | 100% |  |
| 85 |  | Pagina de Faq | 5h | 2019-03-20 A | 2019-03-21 A | 84 | 100% |  |
| 86 |  | Pagina como ganhar dinheiro | 11h | 2019-03-22 A | 2019-03-24 A | 85 | 100% |  |
| 87 |  | Pagina de cadastro do usuário | 9h | 2019-03-24 A | 2019-03-27 A | 86 | 100% |  |
| 88 |  | Pagina para visualizar anúncio | 7h | 2019-03-17 A | 2019-03-19 A | 77, 82 | 100% |  |
| 89 | 1.2.2.1.2 | **Painel do Usuário** | 13.12d | 2019-03-27 A | 2019-04-23 | 76 | 47% | 0d |
| 90 |  | Pagina de edição do perfil do usuário | 10h | 2019-03-27 | 2019-03-29 |  |  | 0d |
| 91 | 1.2.2.1.2.2 | **Gerenciamento de veículos(CRUD)** | 3.12d | 2019-03-29 A | 2019-04-05 | 125, 90 | 76% | 0d |
| 92 |  | Cadastrar veículo | 7h | 2019-03-29 A | 2019-03-31 |  | 86% | 2.25d |
| 93 |  | Lista de veículos | 5h | 2019-03-31 A | 2019-04-01 A | 92 | 100% |  |
| 94 |  | Meus veículos locados | 5h | 2019-04-02 A | 2019-04-04 A | 93 | 100% |  |
| 95 |  | Pagina de estatísticas | 4h | 2019-04-04 | 2019-04-05 | 94 |  | 0d |
| 96 | 1.2.2.1.2.3 | **Gerenciamento de Anúncios(CRUD)** | 2.5d | 2019-04-05 A | 2019-04-10 | 91 | 52% | 0d |
| 97 |  | Cadastrar Anúncios | 11h | 2019-04-05 A | 2019-04-07 A |  | 100% |  |
| 98 |  | Anuncios com interesse | 5h | 2019-04-07 A | 2019-04-09 A | 97 | 100% |  |
| 99 |  | Estatistica | 4h | 2019-04-09 | 2019-04-10 | 98 |  | 0d |
| 100 |  | Anuncio de venda | 11h | 2019-04-05 | 2019-04-07 |  |  | 1.12d |
| 101 | 1.2.2.1.2.4 | **Gerenciamento de locações - Meus Veiculos** | 3.62d | 2019-04-10 A | 2019-04-18 | 96 | 55% | 0d |
| 102 |  | Pagina de locações em andamento | 9h | 2019-04-10 A | 2019-04-12 A | 98 | 100% |  |
| 103 |  | Agendamento | 9h | 2019-04-12 A | 2019-04-14 A | 102 | 100% |  |
| 104 |  | Avaliações dos locadores | 11h | 2019-04-14 | 2019-04-18 | 103 |  | 0d |
| 105 |  | Estatistica | 4h | 2019-04-12 | 2019-04-13 | 102 |  | 2d |
| 106 | 1.2.2.1.2.5 | **Minhas Corridas** | 1.25d | 2019-04-18 A | 2019-04-20 | 101 | 40% | 0d |
| 107 |  | Carros Alugados | 4h | 2019-04-18 A | 2019-04-19 A |  | 100% |  |
| 108 |  | Avaliações | 2h | 2019-04-19 | 2019-04-19 | 107 |  | 0d |
| 109 |  | Estatitisca | 4h | 2019-04-19 | 2019-04-20 | 108 |  | 0d |
| 110 |  | Conversas | 11h | 2019-04-20 | 2019-04-23 | 90, 106 |  | 0d |
| 111 | 1.2.2.2 | **CMS** | 13.5d | 2019-03-05 A | 2019-04-02 |  | 94% | 9.88d |
| 112 |  | Pagina Home do CMS | 22h | 2019-03-05 A | 2019-03-11 A |  | 100% |  |
| 113 | 1.2.2.2.2 | **Gerenciamento de Paginas** | 3.25d | 2019-03-27 A | 2019-04-02 | 112, 76 | 99% | 0d |
| 114 |  | Gerenciamento de Seja um Parceiro (Crud) | 12h | 2019-03-27 A | 2019-03-30 A |  | 100% |  |
| 115 |  | Gerenciamento de Termos de uso(Crud) | 7h | 2019-03-27 A | 2019-03-29 A | 81 | 100% |  |
| 116 |  | Gerenciamento de Melhores Avaliações | 6h | 2019-03-27 A | 2019-03-28 A | 82 | 100% |  |
| 117 | 1.2.2.2.2.4 | **Gerenciamento de Principais Anúncios** | 0d | 2019-03-28 | 2019-03-28 | 116 |  | 0d |
| 118 |  | Aprovação de Anúncios de Venda | 0h | 2019-03-28 | 2019-03-28 |  |  | 0d |
| 119 |  | Gerenciamento de Faq (Crud) | 6h | 2019-03-27 A | 2019-03-28 A | 85 | 100% |  |
| 120 |  | Gerenciamento de como ganhar dinheiro(Crud) | 10h | 2019-03-27 A | 2019-03-29 A | 86 | 100% |  |
| 121 |  | Gerenciamento de Sobre a Empresa(Crud) | 6h | 2019-03-27 A | 2019-03-28 A | 80 | 100% |  |
| 122 |  | Gerenciamento de Tutorial(Crud) | 6h | 2019-03-28 A | 2019-03-30 A | 121 | 100% |  |
| 123 | 1.2.2.2.2.9 | **Gerenciamento da Home** | 2.5d | 2019-03-28 A | 2019-04-02 A | 121 | 100% |  |
| 124 |  | Gerenciamento de conteúdo | 20h | 2019-03-28 A | 2019-04-02 A |  | 100% |  |
| 125 | 1.2.2.2.3 | **Gerenciamento de veículos(CRUD)** | 7.25d | 2019-03-11 A | 2019-03-26 A | 112 | 100% |  |
| 126 | 1.2.2.2.3.1 | **Tipo de véiculo(CRUD)** | 3.5d | 2019-03-11 A | 2019-03-18 A |  | 100% |  |
| 127 |  | Lista tipos de veículos e percentual | 8h | 2019-03-11 A | 2019-03-13 A |  | 100% |  |
| 128 |  | Marcas(Crud) | 7h | 2019-03-13 A | 2019-03-15 A | 127 | 100% |  |
| 129 |  | Modelos(Crud) | 7h | 2019-03-15 A | 2019-03-17 A | 128 | 100% |  |
| 130 |  | Exportação da fip | 6h | 2019-03-17 A | 2019-03-18 A | 129 | 100% |  |
| 131 | 1.2.2.2.3.2 | **Lista de veículos pendentes de aprovação** | 2.25d | 2019-03-18 A | 2019-03-23 A | 126 | 100% |  |
| 132 |  | Página de visualização | 9h | 2019-03-18 A | 2019-03-21 A |  | 100% |  |
| 133 |  | Aprovação de veículos | 9h | 2019-03-21 A | 2019-03-23 A | 132 | 100% |  |
| 134 | 1.2.2.2.3.3 | **Acessórios** | 1.5d | 2019-03-23 A | 2019-03-26 A | 131 | 100% |  |
| 135 |  | Cadastrar acessório | 6h | 2019-03-23 A | 2019-03-24 A |  | 100% |  |
| 136 |  | Lista de acessórios | 6h | 2019-03-24 A | 2019-03-26 A | 135 | 100% |  |
| 137 | 1.2.2.2.4 | **Gerenciamento de Anúncios** | 1.88d | 2019-03-26 A | 2019-03-30 A | 125, 112 | 100% |  |
| 138 |  | Aprovação de Anuncio | 6h | 2019-03-26 A | 2019-03-28 A |  | 100% |  |
| 139 |  | Lista de Aprovados | 9h | 2019-03-28 A | 2019-03-30 A | 138 | 100% |  |
| 140 | 1.2.2.2.5 | **Gerenciamento de Anuncio de Vendas** | 1.75d | 2019-03-26 | 2019-03-30 | 125, 112 |  | 11.62d |

| ID | WBS | Task | Duration | Start | Finish | Predecessors | Complete | Total float |
| --- | --- | --- | --- | --- | --- | --- | --- | --- |
| 141 |  | Aprovação de Anuncio de Vendas | 6h | 2019-03-26 | 2019-03-28 |  |  | 11.62d |
| 142 |  | Lista - Anuncio de Vendas | 1d | 2019-03-28 | 2019-03-30 | 141 |  | 11.62d |
| 143 | 1.2.2.2.6 | **Gerenciamento de Clientes** | 1d | 2019-03-11 A | 2019-03-13 A | 112 | 100% |  |
| 144 |  | Lista de clientes ativados/desativados | 1d | 2019-03-11 A | 2019-03-13 A |  | 100% |  |
| 145 | 1.2.2.2.7 | **Gerenciamento de usuário(CRUD)** | 2.25d | 2019-03-11 A | 2019-03-16 A | 112 | 100% |  |
| 146 |  | Cadastrar Nível | 9h | 2019-03-11 A | 2019-03-13 A |  | 100% |  |
| 147 |  | Cadastrar Usuário | 9h | 2019-03-13 A | 2019-03-16 A | 146 | 100% |  |
| 148 | 1.2.2.2.8 | **Gerenciamento de fale conosco** | 0.75d | 2019-03-11 A | 2019-03-12 A | 112, 78 | 100% |  |
| 149 |  | Lista de E-mails | 6h | 2019-03-11 A | 2019-03-12 A |  | 100% |  |
| 150 | 1.2.2.2.9 | **Pagina de Emails** | 2.25d | 2019-03-27 A | 2019-03-31 A | 112, 76 | 100% |  |
| 151 |  | Lista de Emails | 1d | 2019-03-27 A | 2019-03-29 A | 127 | 100% |  |
| 152 |  | Envio de email | 10h | 2019-03-29 A | 2019-03-31 A | 151 | 100% |  |
| 153 | 1.2.3 | **Mobile** | 15.38d | 2019-03-05 A | 2019-04-06 | 69 | 47% | 8d |
| 154 |  | API | 45h | 2019-03-05 A | 2019-03-17 A |  | 100% |  |
| 155 | 1.2.3.2 | **Autenticação** | 2d | 2019-03-17 A | 2019-03-21 A | 154 | 100% |  |
| 156 |  | Cadastro | 10h | 2019-03-17 A | 2019-03-20 A |  | 100% |  |
| 157 |  | Login | 6h | 2019-03-20 A | 2019-03-21 A | 156 | 100% |  |
| 158 | 1.2.3.3 | **anúncios** | 2.25d | 2019-03-21 A | 2019-03-26 A | 155 | 100% |  |
| 159 |  | Filtro | 10h | 2019-03-21 A | 2019-03-24 A |  | 100% |  |
| 160 |  | visualização | 1d | 2019-03-24 A | 2019-03-26 A | 159 | 100% |  |
| 161 |  | Mapas (Home) | 12h | 2019-03-26 | 2019-03-29 | 158, 154 |  | 12d |
| 162 |  | Edição de perfil | 10h | 2019-03-21 | 2019-03-24 | 155 |  | 14.5d |
| 163 | 1.2.3.6 | **Gerenciamento de locações** | 2.75d | 2019-03-26 | 2019-03-31 | 158, 154 |  | 7.62d |
| 164 |  | Meus veículos locados | 1d | 2019-03-26 | 2019-03-28 |  |  | 7.62d |
| 165 |  | Locações Realizadas | 7h | 2019-03-28 | 2019-03-30 | 164 |  | 7.62d |
| 166 |  | Em andamento | 7h | 2019-03-30 | 2019-03-31 | 165 |  | 7.62d |
| 167 | 1.2.3.7 | **Tela de avaliações** | 1.75d | 2019-03-31 | 2019-04-04 | 158, 163 |  | 8d |
| 168 |  | Veículos Locados | 7h | 2019-03-31 | 2019-04-02 |  |  | 8d |
| 169 |  | Veículos Alugados | 7h | 2019-04-02 | 2019-04-04 | 168 |  | 8d |
| 170 | 1.2.3.8 | **Finalizar locação** | 2d | 2019-03-31 | 2019-04-05 | 163, 154 |  | 7.62d |
| 171 |  | Avaliação | 1d | 2019-03-31 | 2019-04-03 |  |  | 7.62d |
| 172 |  | Pagamento | 1d | 2019-04-03 | 2019-04-05 | 171 |  | 7.62d |
| 173 |  | Chat | 1d | 2019-03-26 | 2019-03-28 | 158, 154 |  | 12.5d |
| 174 |  | Ranking de anuncios | 1d | 2019-04-04 | 2019-04-06 | 158, 167 |  | 8d |
| 175 | 1.2.4 | **Desktop** | 15.75d | 2019-03-05 A | 2019-04-07 | 69 | 60% | 7.62d |
| 176 |  | Tela principal | 14h | 2019-03-05 A | 2019-03-09 A |  | 100% |  |
| 177 |  | Tela de usuários(Crud) | 10h | 2019-03-09 A | 2019-03-11 A | 176 | 100% |  |
| 178 |  | Tela de Funcionarios | 7h | 2019-03-11 A | 2019-03-13 A | 177 | 100% |  |
| 179 |  | Tela de cadastro de Pedido de compra | 10h | 2019-03-11 A | 2019-03-14 A | 177 | 100% |  |
| 180 | 1.2.4.5 | **Tela de conciliação bancaria** | 2.38d | 2019-03-11 A | 2019-03-16 | 177 | 42% | 16.5d |
| 181 |  | bancos | 4h | 2019-03-11 A | 2019-03-12 A |  | 100% |  |
| 182 |  | contas | 4h | 2019-03-12 A | 2019-03-14 A | 181 | 100% |  |
| 183 |  | transações | 9h | 2019-03-14 | 2019-03-16 | 182 |  | 16.5d |
| 184 |  | Exportação | 2h | 2019-03-16 | 2019-03-16 | 183 |  | 16.5d |
| 185 | 1.2.4.6 | **Tela de Contas a pagar** | 1.5d | 2019-03-16 | 2019-03-20 | 180, 179 |  | 16.5d |
| 186 |  | Exportação | 2h | 2019-03-16 | 2019-03-17 |  |  | 16.5d |
| 187 |  | Conciliar | 5h | 2019-03-17 | 2019-03-18 | 186 |  | 16.5d |
| 188 |  | Criar despesas | 5h | 2019-03-18 | 2019-03-20 | 187 |  | 16.5d |
| 189 | 1.2.4.7 | **Tela de contas a receber** | 1.12d | 2019-04-05 | 2019-04-07 | 180, 170 |  | 7.62d |
| 190 |  | Conciliar | 7h | 2019-04-05 | 2019-04-07 |  |  | 7.62d |
| 191 |  | Exportação | 2h | 2019-04-07 | 2019-04-07 | 190 |  | 7.62d |
| 192 | 1.3 | **Encerramento** | 4d | 2019-04-23 A | 2019-05-01 | 68, 2 | 43% | 0d |
| 193 | 1.3.1 | **Implementação** | 1d | 2019-04-23 A | 2019-04-25 |  | 75% | 0d |
| 194 |  | Banco de dados | 1d | 2019-04-23 A | 2019-04-25 A | 69 | 100% |  |
| 195 |  | Web | 1d | 2019-04-23 A | 2019-04-25 A | 74 | 100% |  |
| 196 |  | Desktop | 1d | 2019-04-23 A | 2019-04-25 A | 175 | 100% |  |
| 197 |  | Mobile | 1d | 2019-04-23 | 2019-04-25 | 153 |  | 0d |
| 198 |  | Aceite do Cliente | 1d | 2019-04-25 | 2019-04-27 | 193, 26 |  | 0d |
| 199 |  | Apresentação técnica | 1d | 2019-04-27 | 2019-04-29 | 198 |  | 0d |
| 200 |  | Apresentação comercial | 1d | 2019-04-29 | 2019-05-01 | 199 |  | 0d |

## Version 2 (saved 2019-05-28)

Note of the change: Merge branch 'master' of https://github.com/pushcodecontato/Web

Last finish 2019-05-01 → 2019-05-10 (+9d). Complete tasks 106 → 98.

Changed:

| ID | Task | Start | Finish | Duration | Complete | Total float | Predecessors | Other |
| --- | --- | --- | --- | --- | --- | --- | --- | --- |
| 1 | **Projeto Mob'Share** |  | 2019-05-01 → 2019-05-10 (+9d) | 36.25d → 40.25d | 76% → 74% |  |  | resources none → Edifício; Infraestrutura; Departamentos Administrativos |
| 2 | **Planejamento** |  | 2019-03-07 → 2019-05-01 (+55d) | 9.75d → 36.25d | 95% → 86% | 22.5d → -4d |  |  |
| 26 | **Documentação do projeto** |  | 2019-03-07 → 2019-05-01 (+55d) | 5d → 31.5d | 87% → 66% | 22.5d → -4d |  |  |
| 33 | **Manual do Usuário** |  | 2019-03-05 → 2019-05-01 (+57d) | 4.12d → 31.5d | 75% → 46% | 23.38d → -4d |  |  |
| 34 | Manual Web |  | 2019-03-02 → 2019-04-22 (+51d) | 21h → 31h | 75% → 51% | 1.03d → 0.22d |  |  |
| 35 | Manual do Mobile |  | 2019-03-05 → 2019-04-28 (+54d) | 11h → 20h | 75% → 41% | 23.5d → -2.62d |  |  |
| 36 | Manual do Desktop |  | 2019-03-05 → 2019-05-01 (+57d) | 12h → 20h | 75% → 45% | 23.38d → -4d |  |  |
| 37 | **Wireframes** |  | 2019-03-04 A → 2019-03-07 (+3d) | 3.75d → 5.12d | 100% → 95% | none → 22.38d |  |  |
| 38 | **Web** |  | 2019-03-04 A → 2019-03-07 (+3d) | 3.5d → 4.75d | 100% → 99% | none → 22.75d |  |  |
| 41 | **Painel do usuário** |  | 2019-03-04 A → 2019-03-07 (+3d) | 2.12d → 3.38d | 100% → 97% | none → 22.75d |  |  |
| 42 | Edição de perfil do usuário |  | 2019-02-28 A → 2019-03-07 (+7d) | 3h → 8h | 100% → 88% | none → 22.75d |  |  |
| 43 | Gerenciamento de veículo |  | 2019-03-01 A → 2019-03-02 A (+1d) | 3h → 5h |  |  |  |  |
| 44 | Gerenciamento de anúncios |  | 2019-03-02 A → 2019-03-03 A (+1d) | 4h → 6h |  |  |  |  |
| 45 | Gerenciamento de locações - Meus veículos |  |  | 3h → 5h |  |  |  |  |
| 46 | Minhas Corridas |  | 2019-03-03 A → 2019-03-04 A (+1d) | 3h → 5h |  |  |  |  |
| 48 | **CMS** |  | 2019-03-02 A → 2019-03-06 A (+4d) | 1.12d → 3.25d |  |  |  |  |
| 49 | Home |  | 2019-02-28 A → 2019-03-02 A (+2d) | 3h → 9h |  |  |  |  |
| 50 | Gerenciamento de Paginas |  | 2019-03-01 A → 2019-03-02 A (+1d) | 3h → 5h |  |  |  |  |
| 51 | Gerenciamento de usuários |  | 2019-03-01 A → 2019-03-03 A (+2d) | 2h → 4h |  |  | 49 → 50 |  |
| 52 | Gerenciamento de Veículos |  | 2019-03-01 A → 2019-03-03 A (+2d) | 2h → 4h |  |  | 49, 51 → 51 |  |
| 53 | Gerenciamento de anúncios |  | 2019-03-02 A → 2019-03-04 A (+2d) | 2h → 4h |  |  | 49, 52 → 52 |  |
| 54 | Gerenciamento de anúncios de venda |  | 2019-03-02 A → 2019-03-04 A (+2d) | 2h → 4h |  |  | 49, 52 → 53 |  |
| 55 | Gerenciamento de Clientes |  | 2019-03-01 A → 2019-03-05 A (+4d) | 2h → 4h |  |  | 49, 51 → 54 |  |
| 56 | Gerenciamento de Fale Conosco |  | 2019-03-01 A → 2019-03-05 A (+4d) | 2h → 4h |  |  | 49, 51 → 55 |  |
| 57 | Página de E-mails |  | 2019-03-02 A → 2019-03-06 A (+4d) | 1h → 4h |  |  | 49, 56, 51 → 56 |  |
| 58 | Desktop |  | 2019-02-27 A → 2019-02-28 (+1d) | 10h → 14h | 100% → 71% | none → 25.75d |  |  |
| 59 | Mobile |  | 2019-03-04 A → 2019-03-07 A (+3d) | 10h → 14h |  |  |  |  |
| 65 | **UML** |  |  |  |  |  | 7 → 7, 37 |  |
| 68 | **Desenvolvimento** |  |  |  | 73% → 72% |  |  |  |
| 75 | **Site** |  |  |  | 70% → 73% |  |  |  |
| 76 | **Paginas** |  |  | 10.25d → 10.5d |  |  |  |  |
| 77 | Pagina home |  | 2019-03-08 A → 2019-03-09 A (+1d) | 10h → 14h |  |  |  |  |
| 78 | Fale conosco |  |  | 2h → 4h |  |  |  |  |
| 79 | Pagina seja um parceiro |  |  | 10h → 12h |  |  |  |  |
| 80 | Pagina sobre a empresa |  | 2019-03-13 A → 2019-03-14 A (+1d) | 1d → 10h |  |  |  |  |
| 81 | Pagina termos de uso |  | 2019-03-15 A → 2019-03-16 A (+1d) | 1d → 12h |  |  |  |  |
| 82 | Pagina melhores avaliações |  | 2019-03-17 A → 2019-03-18 A (+1d) | 7h → 10h |  |  |  |  |
| 85 | Pagina de Faq |  | 2019-03-21 A → 2019-03-22 A (+1d) | 5h → 7h |  |  |  |  |
| 86 | Pagina como ganhar dinheiro |  | 2019-03-24 A → 2019-03-25 A (+1d) | 11h → 13h |  |  |  |  |
| 87 | Pagina de cadastro do usuário |  |  | 9h → 11h |  |  |  |  |
| 88 | Pagina para visualizar anúncio |  |  | 7h → 9h |  |  |  |  |
| 89 | **Painel do Usuário** | 2019-03-27 A → 2019-03-29 A (+2d) |  | 13.12d → 11.88d |  |  |  |  |
| 90 | Pagina de edição do perfil do usuário | 2019-03-27 → 2019-04-03 (+7d) | 2019-03-29 → 2019-04-05 (+7d) |  |  | 0d → -3.38d |  |  |
| 91 | **Gerenciamento de veículos(CRUD)** |  | 2019-04-05 → 2019-04-06 (+1d) | 3.12d → 3.88d |  | 0d → -0.75d |  |  |
| 92 | Cadastrar veículo |  | 2019-03-31 → 2019-04-06 (+6d) |  |  | 2.25d → -0.38d |  |  |
| 95 | Pagina de estatísticas | 2019-04-04 → 2019-04-05 (+1d) | 2019-04-05 → 2019-04-06 (+1d) |  |  | 0d → -0.75d |  |  |
| 96 | **Gerenciamento de Anúncios(CRUD)** |  |  | 2.5d → 2.62d |  | 0d → -0.12d |  |  |
| 100 | Anuncio de venda | 2019-04-05 → 2019-04-06 (+1d) | 2019-04-07 → 2019-04-09 (+2d) |  |  | 1.12d → 0.38d |  |  |
| 111 | **CMS** |  | 2019-04-02 → 2019-04-22 (+20d) | 13.5d → 23d |  | 9.88d → 0.38d |  |  |
| 112 | Pagina Home do CMS |  | 2019-03-11 A → 2019-03-14 (+3d) | 22h → 23h | 100% → 96% | none → 6.25d |  |  |
| 140 | **Gerenciamento de Anuncio de Vendas** | 2019-03-26 → 2019-04-10 (+15d) | 2019-03-30 → 2019-04-22 (+23d) | 1.75d → 5.75d |  | 11.62d → 0.26d |  |  |
| 141 | Aprovação de Anuncio de Vendas | 2019-03-26 → 2019-04-10 (+15d) | 2019-03-28 → 2019-04-12 (+15d) |  |  | 11.62d → 0.26d |  |  |
| 142 | Lista - Anuncio de Vendas | 2019-03-28 → 2019-04-20 (+23d) | 2019-03-30 → 2019-04-22 (+23d) |  |  | 11.62d → 0.38d |  |  |
| 153 | **Mobile** |  | 2019-04-06 → 2019-04-16 (+10d) | 15.38d → 20d |  | 8d → 3.38d |  |  |
| 161 | Mapas (Home) | 2019-03-26 → 2019-04-07 (+12d) | 2019-03-29 → 2019-04-10 (+12d) |  |  | 12d → 6.12d |  |  |
| 162 | Edição de perfil | 2019-03-21 → 2019-04-05 (+15d) | 2019-03-24 → 2019-04-07 (+14d) |  |  | 14.5d → 7.62d |  |  |
| 167 | **Tela de avaliações** |  | 2019-04-04 → 2019-04-14 (+10d) | 1.75d → 6.38d |  | 8d → 3.38d |  |  |
| 169 | Veículos Alugados | 2019-04-02 → 2019-04-12 (+10d) | 2019-04-04 → 2019-04-14 (+10d) |  |  | 8d → 3.38d |  |  |
| 173 | Chat | 2019-03-26 → 2019-04-10 (+15d) | 2019-03-28 → 2019-04-12 (+15d) |  |  | 12.5d → 5.12d |  |  |
| 174 | Ranking de anuncios | 2019-04-04 → 2019-04-14 (+10d) | 2019-04-06 → 2019-04-16 (+10d) |  |  | 8d → 3.38d |  |  |
| 175 | **Desktop** |  |  |  | 60% → 51% |  |  |  |
| 176 | Tela principal |  | 2019-03-09 A → 2019-03-09 | 14h → 16h | 100% → 88% | none → 21.38d |  |  |
| 178 | Tela de Funcionarios |  | 2019-03-13 A → 2019-03-17 (+4d) | 7h → 8h | 100% → 88% | none → 17.75d |  |  |
| 179 | Tela de cadastro de Pedido de compra |  | 2019-03-14 A → 2019-03-14 | 10h → 11h | 100% → 91% | none → 17d |  |  |
| 180 | **Tela de conciliação bancaria** |  | 2019-03-16 → 2019-03-17 (+1d) | 2.38d → 2.75d | 42% → 31% | 16.5d → 15.62d |  |  |
| 181 | bancos |  | 2019-03-12 A → 2019-03-14 (+2d) | 4h → 8h | 100% → 50% | none → 0d |  |  |
| 182 | contas |  | 2019-03-14 A → 2019-03-14 | 4h → 7h | 100% → 57% | none → 15.62d |  |  |
| 183 | transações |  | 2019-03-16 → 2019-03-17 (+1d) |  |  | 16.5d → 15.62d |  |  |
| 184 | Exportação | 2019-03-16 → 2019-03-17 (+1d) | 2019-03-16 → 2019-03-17 (+1d) |  |  | 16.5d → 15.62d |  |  |
| 185 | **Tela de Contas a pagar** | 2019-03-16 → 2019-03-17 (+1d) | 2019-03-20 → 2019-03-21 (+1d) | 1.5d → 2d |  | 16.5d → 15.62d |  |  |

| ID | Task | Start | Finish | Duration | Total float |
| --- | --- | --- | --- | --- | --- |
| 186 | Exportação | 2019-03-16 → 2019-03-17 (+1d) | 2019-03-17 → 2019-03-18 (+1d) |  | 16.5d → 15.62d |
| 187 | Conciliar | 2019-03-17 → 2019-03-18 (+1d) | 2019-03-18 → 2019-03-20 (+2d) | 5h → 7h | 16.5d → 15.62d |
| 188 | Criar despesas | 2019-03-18 → 2019-03-20 (+2d) | 2019-03-20 → 2019-03-21 (+1d) | 5h → 7h | 16.5d → 15.62d |
| 192 | **Encerramento** |  | 2019-05-01 → 2019-05-10 (+9d) | 4d → 8d |  |
| 193 | **Implementação** |  | 2019-04-25 → 2019-05-04 (+9d) | 1d → 5d |  |
| 197 | Mobile | 2019-04-23 → 2019-05-01 (+8d) | 2019-04-25 → 2019-05-04 (+9d) |  |  |
| 198 | Aceite do Cliente | 2019-04-25 → 2019-05-04 (+9d) | 2019-04-27 → 2019-05-05 (+8d) |  |  |
| 199 | Apresentação técnica | 2019-04-27 → 2019-05-05 (+8d) | 2019-04-29 → 2019-05-08 (+9d) |  |  |
| 200 | Apresentação comercial | 2019-04-29 → 2019-05-08 (+9d) | 2019-05-01 → 2019-05-10 (+9d) |  |  |
